# Proyecto_Visualizacion_Concesiones_Salmoneras

Schedule from MS Project, 2024-09-10 to 2024-12-13, costs in $, A marks actual dates.

## Calendars

- Standard: Mon-Fri 08:00-12:00, 13:00-17:00; Sat-Sun off.

## Resources

| Resource | Rate | Cost per use |
| --- | --- | --- |
| Benjamin Gatica | 15000 |  |
| Marcelo Ramirez |  | 50000 |
| Marcelo Gutierrez |  | 50000 |
| Celeste Parra | 25000 |  |

## Schedule

| ID | WBS | Task | Type | Duration | Start | Finish | Predecessors | Complete | Remaining | Total slack | Resources | Work | Actual work | Cost | Actual cost |
| --- | --- | --- | --- | --- | --- | --- | --- | --- | --- | --- | --- | --- | --- | --- | --- |
| 1 | 1 | **Proyecto Visualización Concesiones Salmoneras** |  | 69d? | 2024-09-10 A | 2024-12-13 |  | 82% | 12.49d? | 0d |  | 1000h | 712h | 15,100,000 | 11,230,000 |
| 2 | 1.1 | **Fase 1: Planificación** |  | 6d | 2024-09-10 A | 2024-09-17 |  | 94% | 0.38d | 0d |  | 176h | 144h | 2,430,000 | 2,010,000 |
| 3 | 1.1.1 | Reunión Inicial de Alineación | manual | 1d | 2024-09-10 A | 2024-09-10 A |  | 100% |  |  | Benjamin Gatica; Celeste Parra; Marcelo Gutierrez; Marcelo Ramirez | 8h | 8h | 100,000 | 100,000 |
| 4 | 1.1.2 | Levantamiento de Requisitos | manual | 1d | 2024-09-10 A | 2024-09-10 A | 3 | 100% |  |  |  |  |  |  |  |
| 5 | 1.1.3 | Definición de Tecnologías a Utilizar | manual | 1d | 2024-09-11 A | 2024-09-11 A | 3 | 100% |  |  | Benjamin Gatica; Marcelo Ramirez | 16h | 16h | 170,000 | 170,000 |
| 6 | 1.1.4 | Definición Metodología | manual | 1d | 2024-09-11 A | 2024-09-11 A | 3 | 100% |  |  | Benjamin Gatica | 8h | 8h | 120,000 | 120,000 |
| 7 | 1.1.5 | Definición de Funcionalidades Clave | manual | 1d | 2024-09-11 A | 2024-09-11 A | 3 | 100% |  |  | Benjamin Gatica; Celeste Parra; Marcelo Gutierrez; Marcelo Ramirez | 32h | 32h | 420,000 | 420,000 |
| 8 | 1.1.6 | Elaboración de Acta de Constitución | manual | 3d | 2024-09-12 A | 2024-09-16 A | 3 | 100% |  |  | Benjamin Gatica | 24h | 24h | 360,000 | 360,000 |
| 9 | 1.1.7 | Preparación Carta Gantt Inicial | manual | 3d | 2024-09-12 A | 2024-09-16 A | 3 | 100% |  |  | Benjamin Gatica | 24h | 24h | 360,000 | 360,000 |
| 10 | 1.1.8 | Reunion Semanal | manual | 1d | 2024-09-16 A | 2024-09-16 |  |  | 1d |  | Benjamin Gatica; Celeste Parra; Marcelo Gutierrez; Marcelo Ramirez | 32h |  | 420,000 |  |
| 11 | 1.1.9 | **Fin Fase Planificación (entregables)** |  | 1d | 2024-09-17 A | 2024-09-17 A |  | 100% |  |  |  | 32h | 32h | 480,000 | 480,000 |
| 12 | 1.1.9.1 | Acta de constitución | manual | 1d | 2024-09-17 A | 2024-09-17 A | 8 | 100% |  |  | Benjamin Gatica | 8h | 8h | 120,000 | 120,000 |
| 13 | 1.1.9.2 | Funcionalidades | manual | 1d | 2024-09-17 A | 2024-09-17 A | 7 | 100% |  |  | Benjamin Gatica | 8h | 8h | 120,000 | 120,000 |
| 14 | 1.1.9.3 | Requisitos Funcionales y No funcionales | manual | 1d | 2024-09-17 A | 2024-09-17 A | 4 | 100% |  |  | Benjamin Gatica | 8h | 8h | 120,000 | 120,000 |
| 15 | 1.1.9.4 | Tecnologías | manual | 1d | 2024-09-17 A | 2024-09-17 A | 5 | 100% |  |  | Benjamin Gatica | 8h | 8h | 120,000 | 120,000 |
| 16 | 1.2 | **Fase 2: Diseño** |  | 6d | 2024-09-18 A | 2024-09-25 | 2 | 91% | 0.55d | 0d |  | 112h | 80h | 1,620,000 | 1,200,000 |
| 17 | 1.2.1 | Reunion Semanal | manual | 1d | 2024-09-23 A | 2024-09-23 |  |  | 1d |  | Benjamin Gatica; Celeste Parra; Marcelo Gutierrez; Marcelo Ramirez | 32h |  | 420,000 |  |
| 18 | 1.2.2 | Diseño Base de Datos | manual | 3d | 2024-09-18 A | 2024-09-20 A | 14, 12, 13, 15 | 100% |  |  | Benjamin Gatica | 24h | 24h | 360,000 | 360,000 |
| 19 | 1.2.3 | Diseño API | manual | 1d | 2024-09-25 A | 2024-09-25 A | 14, 12, 13, 15 | 100% |  |  | Benjamin Gatica | 8h | 8h | 120,000 | 120,000 |
| 20 | 1.2.4 | Arquitectura | manual | 3d | 2024-09-20 A | 2024-09-24 A | 14, 12, 13, 15 | 100% |  |  | Benjamin Gatica | 24h | 24h | 360,000 | 360,000 |
| 21 | 1.2.5 | **Fin Fase de Diseño (entregables)** |  | 1d | 2024-09-24 A | 2024-09-24 A |  | 100% |  |  |  | 24h | 24h | 360,000 | 360,000 |
| 22 | 1.2.5.1 | Documentación API | manual | 1d | 2024-09-24 A | 2024-09-24 A | 19 | 100% |  |  | Benjamin Gatica | 8h | 8h | 120,000 | 120,000 |
| 23 | 1.2.5.2 | Modelo ER - Base de datos | manual | 1d | 2024-09-24 A | 2024-09-24 A | 18 | 100% |  |  | Benjamin Gatica | 8h | 8h | 120,000 | 120,000 |
| 24 | 1.2.5.3 | Diagrama Arquitectura | manual | 1d | 2024-09-24 A | 2024-09-24 A | 20 | 100% |  |  | Benjamin Gatica | 8h | 8h | 120,000 | 120,000 |

| ID | WBS | Task | Type | Duration | Start | Finish | Predecessors | Complete | Remaining | Actual finish | Total slack | Resources | Work | Actual work | Cost | Actual cost |
| --- | --- | --- | --- | --- | --- | --- | --- | --- | --- | --- | --- | --- | --- | --- | --- | --- |
| 25 | 1.3 | **Fase 3: Desarrollo** |  | 42d? | 2024-09-26 A | 2024-11-22 | 16 | 97% | 1.42d? |  | 0d |  | 472h | 456h | 7,680,000 | 7,440,000 |
| 26 | 1.3.1 | **Desarrollo Base de datos** |  | 3d? | 2024-09-26 A | 2024-09-30 A | 23 | 100% |  |  |  |  | 32h | 32h | 480,000 | 480,000 |
| 27 | 1.3.1.1 | Reunion Semanal | manual | 1d | 2024-09-30 A | 2024-09-30 A |  | 100% |  |  |  | Benjamin Gatica | 8h | 8h | 120,000 | 120,000 |
| 28 | 1.3.1.2 | Implementar Base de datos | manual | 3d | 2024-09-26 A | 2024-09-30 A |  | 100% |  |  |  | Benjamin Gatica | 24h | 24h | 360,000 | 360,000 |
| 29 | 1.3.2 | **Desarrollo Scripts Carga de datos** |  | 9d | 2024-09-26 A | 2024-10-08 A |  | 100% |  |  |  |  | 88h | 88h | 1,320,000 | 1,320,000 |
| 30 | 1.3.2.1 | Reunion Semanal | manual | 1d | 2024-10-07 A | 2024-10-07 A |  | 100% |  |  |  | Benjamin Gatica | 8h | 8h | 120,000 | 120,000 |
| 31 | 1.3.2.2 | **Desarrollar Script Archivos XLSX, XLS** |  | 6d | 2024-09-26 A | 2024-10-03 |  | 100% |  | 2024-10-02 |  |  | 48h | 48h | 720,000 | 720,000 |
| 32 | 1.3.2.2.1 | Desarrollar Script para Los Lagos | manual | 2d | 2024-09-26 A | 2024-09-27 A |  | 100% |  |  |  | Benjamin Gatica | 16h | 16h | 240,000 | 240,000 |
| 33 | 1.3.2.2.2 | Desarrollar Script para Aysen | manual | 2d | 2024-09-27 A | 2024-09-30 A |  | 100% |  |  |  | Benjamin Gatica | 16h | 16h | 240,000 | 240,000 |
| 34 | 1.3.2.2.3 | Desarrollar Script para Magallanes | manual | 2d | 2024-10-01 A | 2024-10-02 A |  | 100% |  |  |  | Benjamin Gatica | 16h | 16h | 240,000 | 240,000 |
| 35 | 1.3.2.3 | **Desarrollar Script Archivos KML** |  | 4d | 2024-10-03 A | 2024-10-08 A |  | 100% |  |  |  |  | 32h | 32h | 480,000 | 480,000 |
| 36 | 1.3.2.3.1 | Desarrollar Script para Aysen | manual | 2d | 2024-10-03 A | 2024-10-04 A |  | 100% |  |  |  | Benjamin Gatica | 16h | 16h | 240,000 | 240,000 |
| 37 | 1.3.2.3.2 | Desarrollar Script para Magallanes | manual | 2d | 2024-10-07 A | 2024-10-08 A |  | 100% |  |  |  | Benjamin Gatica | 16h | 16h | 240,000 | 240,000 |
| 38 | 1.3.3 | **Desarrollo API** |  | 3d | 2024-10-09 A | 2024-10-11 A | 22, 26 | 100% |  |  |  |  | 24h | 24h | 360,000 | 360,000 |
| 39 | 1.3.3.1 | Crear Endpoint "GetEstaciones" | manual | 1d | 2024-10-09 A | 2024-10-09 A |  | 100% |  |  |  | Benjamin Gatica | 8h | 8h | 120,000 | 120,000 |
| 40 | 1.3.3.2 | Crear Endpoint "Perfiles" | manual | 1d | 2024-10-10 A | 2024-10-10 A |  | 100% |  |  |  | Benjamin Gatica | 8h | 8h | 120,000 | 120,000 |
| 41 | 1.3.3.3 | Crear Endpoint "Perfiles/<e_code>" | manual | 1d | 2024-10-11 A | 2024-10-11 A |  | 100% |  |  |  | Benjamin Gatica | 8h | 8h | 120,000 | 120,000 |
| 42 | 1.3.4 | **Desarrollo Aplicación Web** |  | 30d | 2024-10-14 A | 2024-11-22 | 26, 29, 38 | 95% | 1.62d |  | 0d |  | 296h | 280h | 5,040,000 | 4,800,000 |
| 43 | 1.3.4.1 | Reunion Semanal | manual | 1d | 2024-10-14 A | 2024-10-14 A |  | 100% |  |  |  | Benjamin Gatica; Celeste Parra; Marcelo Gutierrez; Marcelo Ramirez | 8h | 8h | 220,000 | 220,000 |
| 44 | 1.3.4.2 | MOD-1: Mapa Interactivo con Concesiones | manual | 7d | 2024-10-14 A | 2024-10-22 A |  | 100% |  |  |  | Benjamin Gatica | 56h | 56h | 840,000 | 840,000 |
| 45 | 1.3.4.3 | Reunion Semanal | manual | 1d | 2024-10-21 A | 2024-10-21 A |  | 100% |  |  |  | Benjamin Gatica; Celeste Parra; Marcelo Gutierrez; Marcelo Ramirez | 8h | 8h | 220,000 | 220,000 |
| 46 | 1.3.4.4 | MOD-2: Ver Perfiles de Concesiones | manual | 4d | 2024-10-22 A | 2024-10-25 A | 44 | 100% |  |  |  | Benjamin Gatica | 32h | 32h | 480,000 | 480,000 |
| 47 | 1.3.4.5 | MOD-3: Filtrar Perfiles de Concesiones | manual | 4d | 2024-10-28 A | 2024-10-31 A | 46 | 100% |  |  |  | Benjamin Gatica | 32h | 32h | 480,000 | 480,000 |
| 48 | 1.3.4.6 | Reunion Semanal | manual | 1d | 2024-10-28 A | 2024-10-28 A |  | 100% |  |  |  | Benjamin Gatica; Celeste Parra; Marcelo Gutierrez; Marcelo Ramirez | 8h | 8h | 220,000 | 220,000 |
| 49 | 1.3.4.7 | MOD-4: Gráfico TS | manual | 5d | 2024-11-01 A | 2024-11-07 A | 46 | 100% |  |  |  | Benjamin Gatica | 40h | 40h | 600,000 | 600,000 |
| 50 | 1.3.4.8 | Reunion Semanal | manual | 1d | 2024-11-04 A | 2024-11-04 A |  | 100% |  |  |  | Benjamin Gatica; Celeste Parra; Marcelo Gutierrez; Marcelo Ramirez | 8h | 8h | 220,000 | 220,000 |
| 51 | 1.3.4.9 | Reunion Semanal | manual | 1d | 2024-11-11 A | 2024-11-11 A |  | 100% |  |  |  | Benjamin Gatica; Celeste Parra; Marcelo Gutierrez; Marcelo Ramirez | 8h | 8h | 220,000 | 220,000 |
| 52 | 1.3.4.10 | MOD-5: Grafico Temperatura-Profundidad | manual | 5d | 2024-11-08 A | 2024-11-14 A | 46 | 100% |  |  |  | Benjamin Gatica | 40h | 40h | 600,000 | 600,000 |
| 53 | 1.3.4.11 | Reunion Semanal | manual | 1d | 2024-11-18 A | 2024-11-18 A |  | 100% |  |  |  | Benjamin Gatica; Celeste Parra; Marcelo Gutierrez; Marcelo Ramirez | 8h | 8h | 220,000 | 220,000 |
| 54 | 1.3.4.12 | MOD-6: Barra de busqueda | manual | 6d | 2024-11-15 A | 2024-11-22 | 44 | 67% | 2d |  |  | Benjamin Gatica | 48h | 32h | 720,000 | 480,000 |

| ID | WBS | Task | Type | Duration | Start | Finish | Predecessors | Complete | Remaining | Total slack | Resources | Work | Actual work | Cost | Actual cost |
| --- | --- | --- | --- | --- | --- | --- | --- | --- | --- | --- | --- | --- | --- | --- | --- |
| 55 | 1.3.5 | **Fin Fase Desarrollo (entregables)** |  | 1d | 2024-11-22 A | 2024-11-22 A |  | 100% |  |  |  | 32h | 32h | 480,000 | 480,000 |
| 56 | 1.3.5.1 | Aplicación Web | manual | 1d | 2024-11-22 A | 2024-11-22 A | 42 | 100% |  |  | Benjamin Gatica | 8h | 8h | 120,000 | 120,000 |
| 57 | 1.3.5.2 | Base de datos | manual | 1d | 2024-11-22 A | 2024-11-22 A | 26 | 100% |  |  | Benjamin Gatica | 8h | 8h | 120,000 | 120,000 |
| 58 | 1.3.5.3 | API | manual | 1d | 2024-11-22 A | 2024-11-22 A | 38 | 100% |  |  | Benjamin Gatica | 8h | 8h | 120,000 | 120,000 |
| 59 | 1.3.5.4 | Scripts Carga de Datos | manual | 1d | 2024-11-22 A | 2024-11-22 A | 29 | 100% |  |  | Benjamin Gatica | 8h | 8h | 120,000 | 120,000 |
| 60 | 1.4 | **Fase 4: Pruebas y QA** |  | 12d | 2024-11-25 A | 2024-12-10 | 25 | 25% | 9d | 0d |  | 192h | 32h | 2,860,000 | 580,000 |
| 61 | 1.4.1 | Reunion Semanal | manual | 1d | 2024-11-25 | 2024-11-25 |  |  |  |  | Benjamin Gatica; Celeste Parra; Marcelo Gutierrez; Marcelo Ramirez | 32h |  | 420,000 |  |
| 62 | 1.4.2 | Creacion Casos de prueba | manual | 1d | 2024-11-25 A | 2024-11-25 A |  | 100% |  |  | Benjamin Gatica | 8h | 8h | 120,000 | 120,000 |
| 63 | 1.4.3 | Creación Plan de Pruebas | manual | 2d | 2024-11-25 A | 2024-11-26 A |  | 100% |  |  | Benjamin Gatica | 16h | 16h | 240,000 | 240,000 |
| 64 | 1.4.4 | Pruebas Unitarias | manual | 2d | 2024-11-27 | 2024-11-28 |  |  |  |  | Benjamin Gatica | 16h |  | 240,000 |  |
| 65 | 1.4.5 | Pruebas de Integración | manual | 2d | 2024-11-29 | 2024-12-01 |  |  |  |  | Benjamin Gatica | 16h |  | 240,000 |  |
| 66 | 1.4.6 | Reunion Semanal | manual | 1d | 2024-12-02 | 2024-12-02 |  |  |  |  | Benjamin Gatica; Celeste Parra; Marcelo Gutierrez; Marcelo Ramirez | 32h |  | 420,000 |  |
| 67 | 1.4.7 | Pruebas Funcionales | manual | 2d | 2024-12-02 | 2024-12-03 |  |  |  |  | Benjamin Gatica | 16h |  | 240,000 |  |
| 68 | 1.4.8 | Pruebas de Usabilidad y Aceptación | manual | 2d | 2024-12-04 | 2024-12-05 |  |  |  |  | Benjamin Gatica | 16h |  | 240,000 |  |
| 69 | 1.4.9 | Pruebas de rendimiento y seguridad | manual | 2d | 2024-12-06 | 2024-12-09 |  |  |  |  | Benjamin Gatica | 16h |  | 240,000 |  |
| 70 | 1.4.10 | Reunion Semanal | manual | 1d | 2024-12-09 A | 2024-12-09 A |  | 100% |  |  | Benjamin Gatica; Celeste Parra; Marcelo Gutierrez; Marcelo Ramirez | 8h | 8h | 220,000 | 220,000 |
| 71 | 1.4.11 | **Fin Fase de Pruebas y QA (entregables)** |  | 1d | 2024-12-10 | 2024-12-10 |  |  |  |  |  | 16h |  | 240,000 |  |
| 72 | 1.4.11.1 | Casos de prueba | manual | 1d? | 2024-12-10 | 2024-12-10 |  |  |  |  | Benjamin Gatica | 8h |  | 120,000 |  |
| 73 | 1.4.11.2 | Plan de pruebas | manual | 1d | 2024-12-10 | 2024-12-10 |  |  |  |  | Benjamin Gatica | 8h |  | 120,000 |  |
| 74 | 1.5 | **Fase 5: Despliegue** |  | 3d | 2024-12-11 | 2024-12-13 | 60, 25 |  |  | 0d |  | 48h |  | 510,000 |  |
| 75 | 1.5.1 | Dockerizar App Web | manual | 1d | 2024-12-11 | 2024-12-11 |  |  |  |  | Benjamin Gatica; Marcelo Ramirez | 16h |  | 170,000 |  |
| 76 | 1.5.2 | Dockerizar Base de Datos | manual | 1d | 2024-12-12 | 2024-12-12 |  |  |  |  | Benjamin Gatica; Marcelo Ramirez | 16h |  | 170,000 |  |
| 77 | 1.5.3 | Dockerizar API | manual | 1d | 2024-12-13 | 2024-12-13 |  |  |  |  | Benjamin Gatica; Marcelo Ramirez | 16h |  | 170,000 |  |
